Schedule from GanttProject, 2016-01-25 to 2016-04-28.

## Calendars

- Project calendar: Mon-Fri working; Sat-Sun off.

## Resources

| Resource | Group |
| --- | --- |
| Ross Tarrant | Project Planner / Developer |
| Connor Perrin | Tester / Developer |
| Will Peck | Project Lead / Lead Developer |
| Phoebe Clarke | Co-ordinator / Developer |
| Ihtasham Chaudhry | Lead Developer / Lead Tester |
| Gavin So | Designer / Developer |
| Kalin Ivanov | Tester / Developer |

## Schedule

| ID | WBS | Task | Type | Duration | Start | Finish | Predecessors | Complete | Resources | Cost |
| --- | --- | --- | --- | --- | --- | --- | --- | --- | --- | --- |
| 1 | 1 | **Worksheet 1** |  | 11d | 2016-01-25 | 2016-02-08 |  | 100% |  |  |
| 2 | 1.1 | Introductory Lecture |  | 1d | 2016-01-25 | 2016-01-25 |  | 100% | Ross Tarrant [10%]; Connor Perrin [10%]; Will Peck [10%]; Phoebe Clarke [10%]; Ihtasham Chaudhry [10%]; Gavin So [10%]; Kalin Ivanov [10%] |  |
| 3 | 1.2 | Communicate with group |  | 1d | 2016-01-26 | 2016-01-26 | 2 | 100% | Connor Perrin [10%]; Will Peck [10%]; Phoebe Clarke [10%] |  |
| 4 | 1.3 | Arrange Group Meeting |  | 1d | 2016-01-27 | 2016-01-27 | 3 | 100% | Will Peck [10%]; Phoebe Clarke [10%] |  |
| 5 | 1.4 | Intro Meeting / Role Assignment | milestone | 0d | 2016-01-28 | 2016-01-28 | 4 | 100% | Ross Tarrant [10%]; Connor Perrin [10%]; Will Peck [10%]; Phoebe Clarke [10%]; Ihtasham Chaudhry [10%]; Gavin So [10%]; Kalin Ivanov [10%] | 700 |
| 6 | 1.5 | Project Backlog |  | 2d | 2016-02-02 | 2016-02-03 | 5, 23 | 100% | Kalin Ivanov [50%] |  |
| 7 | 1.6 | Use Case Diagram |  | 4d | 2016-01-28 | 2016-02-02 | 5 | 100% | Phoebe Clarke [40%] |  |
| 8 | 1.7 | Project Glossary |  | 4d | 2016-01-28 | 2016-02-02 | 5 | 100% | Will Peck [60%] |  |
| 9 | 1.8 | Risk Assessment |  | 4d | 2016-01-28 | 2016-02-02 | 5 | 100% | Connor Perrin [60%] |  |
| 10 | 1.9 | Project Plan |  | 4d | 2016-01-28 | 2016-02-02 | 5 | 100% | Ross Tarrant [60%] |  |
| 11 | 1.10 | Role Definition |  | 4d | 2016-01-28 | 2016-02-02 | 5 | 100% | Gavin So [60%] |  |
| 12 | 1.11 | Discussion of Software Architecture |  | 4d | 2016-01-28 | 2016-02-02 | 5 | 100% | Ihtasham Chaudhry [60%] |  |
| 13 | 1.12 | Minutes |  | 7d | 2016-01-28 | 2016-02-05 | 5 | 100% | Phoebe Clarke [20%] | 20 |
| 14 | 1.13 | Review Work Products |  | 1d | 2016-02-04 | 2016-02-04 | 6, 7, 8, 9, 10, 11, 12 | 100% | Ross Tarrant [50%]; Connor Perrin [50%]; Will Peck [50%]; Phoebe Clarke [50%]; Gavin So [50%]; Kalin Ivanov [50%] |  |
| 15 | 1.14 | Revise Work Products |  | 1d | 2016-02-05 | 2016-02-05 | 14 | 100% | Ross Tarrant [40%]; Connor Perrin [40%]; Will Peck [40%]; Phoebe Clarke [40%]; Ihtasham Chaudhry [40%]; Gavin So [40%]; Kalin Ivanov [40%] |  |
| 16 | 1.15 | Finalise Worksheet 1 Submission |  | 1d | 2016-02-08 | 2016-02-08 | 13, 15 | 100% | Ross Tarrant [60%]; Connor Perrin [60%]; Will Peck [60%]; Phoebe Clarke [60%]; Ihtasham Chaudhry [60%]; Gavin So [60%]; Kalin Ivanov [60%] |  |
| 17 | 1.16 | Worksheet 1 Submission Finished | milestone | 0d | 2016-02-09 | 2016-02-09 | 16 | 100% |  |  |
| 18 | 1.17 | Worksheet 1 Submitted | milestone | 0d | 2016-02-09 | 2016-02-09 | 17 | 100% | Will Peck [10%] |  |
| 19 | 2 | **Requirements** |  | 5d | 2016-01-28 | 2016-02-03 |  | 100% |  |  |
| 20 | 2.1 | FDM Questions Meeting |  | 1d | 2016-01-28 | 2016-01-28 | 5 | 100% | Ross Tarrant [10%]; Connor Perrin [10%]; Will Peck [10%]; Phoebe Clarke [10%]; Ihtasham Chaudhry [10%]; Gavin So [10%]; Kalin Ivanov [10%] | 700 |
| 21 | 2.2 | Decide questions for FDM Interview |  | 1d | 2016-01-29 | 2016-01-29 | 20 | 100% | Ross Tarrant [20%]; Connor Perrin [20%]; Phoebe Clarke [20%]; Ihtasham Chaudhry [20%]; Gavin So [20%]; Kalin Ivanov [20%] |  |
| 22 | 2.3 | Pre-Interview Meeting | milestone | 0d | 2016-02-01 | 2016-02-01 | 21 | 100% | Ross Tarrant [10%]; Connor Perrin [10%]; Will Peck [10%]; Phoebe Clarke [10%]; Ihtasham Chaudhry [10%]; Gavin So [10%]; Kalin Ivanov [10%] |  |
| 23 | 2.4 | FDM Interview |  | 1d | 2016-02-01 | 2016-02-01 | 22 | 100% | Ross Tarrant [10%]; Connor Perrin [10%]; Will Peck [10%]; Phoebe Clarke [10%]; Ihtasham Chaudhry [10%]; Gavin So [10%]; Kalin Ivanov [10%] | 700 |
| 24 | 2.5 | Write Up List of Requirements |  | 1d | 2016-02-02 | 2016-02-02 | 23 | 100% | Ross Tarrant [20%]; Connor Perrin [20%]; Will Peck [20%]; Phoebe Clarke [20%]; Ihtasham Chaudhry [20%]; Gavin So [20%]; Kalin Ivanov [20%] |  |
| 25 | 2.6 | Finalise Requirements |  | 1d | 2016-02-03 | 2016-02-03 | 24 | 100% | Ross Tarrant [50%]; Connor Perrin [50%]; Will Peck [50%]; Phoebe Clarke [50%]; Ihtasham Chaudhry [50%]; Gavin So [50%]; Kalin Ivanov [50%] |  |

| ID | WBS | Task | Type | Duration | Start | Finish | Predecessors | Complete | Resources |
| --- | --- | --- | --- | --- | --- | --- | --- | --- | --- |
| 26 | 3 | **Worksheet 2** |  | 24d | 2016-02-01 | 2016-03-03 |  | 81% |  |
| 27 | 3.1 | Worksheet 2 Released | milestone | 0d | 2016-02-01 | 2016-02-01 |  | 100% |  |
| 28 | 3.2 | Update Gantt Chart to reflect WS2 |  | 1d | 2016-02-01 | 2016-02-01 | 27 | 100% | Ross Tarrant [20%] |
| 29 | 3.3 | Work on WS1 |  | 6d | 2016-02-01 | 2016-02-08 | 27 | 100% | Ross Tarrant [0%]; Connor Perrin [0%]; Will Peck [0%]; Phoebe Clarke [0%]; Gavin So [0%]; Kalin Ivanov [0%] |
| 30 | 3.4 | WS1 Complete | milestone | 0d | 2016-02-09 | 2016-02-09 | 29 | 100% |  |
| 31 | 3.5 | **Meetings** |  | 14d | 2016-02-12 | 2016-03-02 |  |  |  |
| 32 | 3.5.1 | WS2 Initial Group Meeting | milestone | 0d | 2016-02-12 | 2016-02-12 | 30FS+3d |  | Ross Tarrant [10%]; Connor Perrin [10%]; Will Peck [10%]; Phoebe Clarke [10%]; Ihtasham Chaudhry [10%]; Gavin So [10%]; Kalin Ivanov [10%] |
| 33 | 3.5.2 | Supervision Meeting 16/02 | milestone | 0d | 2016-02-16 | 2016-02-16 |  |  | Ross Tarrant [10%]; Connor Perrin [10%]; Will Peck [10%]; Phoebe Clarke [10%]; Ihtasham Chaudhry [10%]; Gavin So [10%]; Kalin Ivanov [10%] |
| 34 | 3.5.3 | Group Meeting 16/02 (Planning WS2) | milestone | 0d | 2016-02-16 | 2016-02-16 |  |  | Ross Tarrant [10%]; Connor Perrin [10%]; Will Peck [10%]; Phoebe Clarke [10%]; Ihtasham Chaudhry [10%]; Gavin So [10%]; Kalin Ivanov [10%] |
| 35 | 3.5.4 | Group Meeting 18/02 (Discuss prototype) | milestone | 0d | 2016-02-18 | 2016-02-18 |  |  | Ross Tarrant [10%]; Connor Perrin [10%]; Will Peck [10%]; Phoebe Clarke [10%]; Ihtasham Chaudhry [10%]; Gavin So [10%]; Kalin Ivanov [10%] |
| 36 | 3.5.5 | Group Meeting 22/02 (Review work so far) | milestone | 0d | 2016-02-22 | 2016-02-22 |  |  | Ross Tarrant [10%]; Connor Perrin [10%]; Will Peck [10%]; Phoebe Clarke [10%]; Ihtasham Chaudhry [10%]; Kalin Ivanov [10%] |
| 37 | 3.5.6 | Group Meeting 25/02 (Check progress)) | milestone | 0d | 2016-02-25 | 2016-02-25 |  |  | Ross Tarrant [10%]; Connor Perrin [10%]; Will Peck [10%]; Phoebe Clarke [10%]; Ihtasham Chaudhry [10%]; Gavin So [10%]; Kalin Ivanov [10%] |
| 38 | 3.5.7 | Group Meeting 29/02 (Review work)) | milestone | 0d | 2016-02-29 | 2016-02-29 |  |  | Ross Tarrant [10%]; Connor Perrin [10%]; Will Peck [10%]; Phoebe Clarke [10%]; Ihtasham Chaudhry [10%]; Gavin So [10%]; Kalin Ivanov [10%] |
| 39 | 3.5.8 | Group Meeting 03/03 (Submit Work) | milestone | 0d | 2016-03-03 | 2016-03-03 |  |  | Ross Tarrant [10%]; Connor Perrin [10%]; Will Peck [10%]; Phoebe Clarke [10%]; Ihtasham Chaudhry [10%]; Gavin So [10%]; Kalin Ivanov [10%] |
| 40 | 3.6 | **Sprint Backlog** |  | 12d | 2016-02-12 | 2016-02-29 | 32 | 100% |  |
| 41 | 3.6.1 | Prioritise Functional Requirements |  | 3d | 2016-02-12 | 2016-02-16 |  | 100% | Will Peck [20%]; Kalin Ivanov [40%] |
| 42 | 3.6.2 | Revise Prioiritisation of Requirements |  | 1d | 2016-02-17 | 2016-02-17 | 41 | 100% | Will Peck [20%]; Kalin Ivanov [40%] |
| 43 | 3.6.3 | Draft Gherkin Features |  | 3d | 2016-02-18 | 2016-02-22 | 42 | 100% | Will Peck [20%]; Kalin Ivanov [40%] |
| 44 | 3.6.4 | Write Gherkin Features |  | 1d | 2016-02-23 | 2016-02-23 | 43 | 100% | Will Peck [20%]; Kalin Ivanov [40%] |
| 45 | 3.6.5 | Create Analysis Object Model |  | 3d | 2016-02-24 | 2016-02-26 | 44 | 100% | Will Peck [20%]; Kalin Ivanov [40%] |
| 46 | 3.6.6 | Group Reviewal of Work Product |  | 1d | 2016-02-29 | 2016-02-29 | 45 | 100% | Will Peck [20%]; Kalin Ivanov [40%] |
| 47 | 3.6.7 | Sprint Backlog Complete | milestone | 0d | 2016-03-01 | 2016-03-01 | 42, 44, 45, 46 | 100% |  |
| 48 | 3.7 | **Detailed Software Architecure** |  | 12d | 2016-02-12 | 2016-02-29 | 32 | 100% |  |
| 49 | 3.7.1 | Plan Software Architecture |  | 3d | 2016-02-12 | 2016-02-16 |  | 100% | Ihtasham Chaudhry [30%]; Gavin So [30%] |
| 50 | 3.7.2 | Create 1st version |  | 3d | 2016-02-17 | 2016-02-19 | 49 | 100% | Ihtasham Chaudhry [30%]; Gavin So [30%] |
| 51 | 3.7.3 | Review with Group |  | 1d | 2016-02-22 | 2016-02-22 | 50 | 100% | Ihtasham Chaudhry [30%]; Gavin So [30%] |
| 52 | 3.7.4 | Create updated version of Software Architecture |  | 3d | 2016-02-23 | 2016-02-25 | 51 | 100% | Ihtasham Chaudhry [30%]; Gavin So [30%] |
| 53 | 3.7.5 | Revise Software Architecture |  | 2d | 2016-02-26 | 2016-02-29 | 52 | 100% | Ihtasham Chaudhry [30%]; Gavin So [30%] |
| 54 | 3.7.6 | Software Architecture Complete | milestone | 0d | 2016-03-01 | 2016-03-01 | 53 | 100% |  |

| ID | WBS | Task | Type | Duration | Start | Finish | Predecessors | Complete | Resources |
| --- | --- | --- | --- | --- | --- | --- | --- | --- | --- |
| 55 | 3.8 | **Detailed Object Design** |  | 10d | 2016-02-12 | 2016-02-25 | 32 | 95% |  |
| 56 | 3.8.1 | Plan Diagrams |  | 2d | 2016-02-12 | 2016-02-15 |  | 100% | Connor Perrin [20%] |
| 57 | 3.8.2 | Create Controller Layer Class DIagram |  | 2d | 2016-02-17 | 2016-02-18 | 56FS+1d | 100% | Phoebe Clarke [20%] |
| 58 | 3.8.3 | Create Repository Layer Class Diagram |  | 2d | 2016-02-19 | 2016-02-22 | 57 | 100% | Connor Perrin [20%] |
| 59 | 3.8.4 | Create Security Layer Class Diagram |  | 2d | 2016-02-24 | 2016-02-25 | 58FS+1d | 100% | Connor Perrin [20%]; Phoebe Clarke [20%]; Ihtasham Chaudhry [20%] |
| 60 | 3.8.5 | Create POJOs |  | 3d | 2016-02-12 | 2016-02-16 |  | 100% | Ihtasham Chaudhry [20%] |
| 61 | 3.8.6 | Create Repo Files for POJOs |  | 3d | 2016-02-19 | 2016-02-23 | 60FS+2d | 100% | Phoebe Clarke [20%] |
| 62 | 3.8.7 | Create User Class Diagram |  | 2d | 2016-02-12 | 2016-02-15 |  | 100% | Phoebe Clarke [20%] |
| 63 | 3.8.8 | Create Property Class Diagram |  | 2d | 2016-02-18 | 2016-02-19 |  | 100% | Connor Perrin [10%]; Ihtasham Chaudhry [10%] |
| 64 | 3.8.9 | Create Landlord Class Diagram |  | 2d | 2016-02-16 | 2016-02-17 | 62 | 100% | Connor Perrin [20%] |
| 65 | 3.8.10 | Create Customer Class Diagram |  | 2d | 2016-02-16 | 2016-02-17 | 62 | 100% | Ihtasham Chaudhry [20%] |
| 66 | 3.8.11 | Object Design Complete | milestone | 0d | 2016-02-26 | 2016-02-26 | 59, 61, 63, 64, 65 |  |  |
| 67 | 3.9 | **Detailed Feature Specification** |  | 14d | 2016-02-12 | 2016-03-02 | 32 | 94% |  |
| 68 | 3.9.1 | Review Features from WS1 |  | 2d | 2016-02-12 | 2016-02-15 |  | 100% | Will Peck [30%]; Kalin Ivanov [30%] |
| 69 | 3.9.2 | Review Features Feedback from WS1 |  | 2d | 2016-02-12 | 2016-02-15 |  | 100% | Kalin Ivanov [30%] |
| 70 | 3.9.3 | Revise Existing Features |  | 2d | 2016-02-16 | 2016-02-17 | 68, 69 | 100% | Will Peck [20%]; Kalin Ivanov [20%] |
| 71 | 3.9.4 | Plan additional features |  | 3d | 2016-02-18 | 2016-02-22 | 70 | 100% | Will Peck [20%]; Kalin Ivanov [20%] |
| 72 | 3.9.5 | Write up new features |  | 4d | 2016-02-23 | 2016-02-26 | 71 | 100% | Will Peck [20%]; Kalin Ivanov [20%] |
| 73 | 3.9.6 | Review Features with Group |  | 1d | 2016-02-29 | 2016-02-29 | 72 | 100% | Will Peck [20%]; Kalin Ivanov [20%] |
| 74 | 3.9.7 | Revise Features |  | 2d | 2016-03-01 | 2016-03-02 | 73 | 100% | Will Peck [20%]; Kalin Ivanov [20%] |
| 75 | 3.9.8 | Featured Specification Complete | milestone | 0d | 2016-03-03 | 2016-03-03 | 74 |  |  |
| 76 | 3.10 | **Minutes of WS2 Meetings** |  | 15d | 2016-02-12 | 2016-03-03 | 32 | 87% |  |
| 77 | 3.10.1 | Minutes for 12/02 |  | 1d | 2016-02-12 | 2016-02-12 | 32 | 100% | Phoebe Clarke [20%] |
| 78 | 3.10.2 | Minutes for 16/02 |  | 1d | 2016-02-16 | 2016-02-16 | 33 | 100% | Phoebe Clarke [20%] |
| 79 | 3.10.3 | Minutes for 18/02 |  | 1d | 2016-02-18 | 2016-02-18 | 35 | 100% | Phoebe Clarke [20%] |
| 80 | 3.10.4 | Minutes for 22/02 |  | 1d | 2016-02-22 | 2016-02-22 | 36 | 100% | Phoebe Clarke [20%] |
| 81 | 3.10.5 | Minutes for 25/02 |  | 1d | 2016-02-25 | 2016-02-25 | 37 | 100% | Phoebe Clarke [20%] |
| 82 | 3.10.6 | Minutes for 29/02 |  | 1d | 2016-02-29 | 2016-02-29 | 38 | 100% | Phoebe Clarke [20%] |
| 83 | 3.10.7 | Minutes for 03/03 |  | 1d | 2016-03-03 | 2016-03-03 | 39 | 100% | Phoebe Clarke [20%] |
| 84 | 3.10.8 | Minutes Completed | milestone | 0d | 2016-03-04 | 2016-03-04 | 78, 79, 80, 81, 82, 83 |  | Phoebe Clarke [20%] |

| ID | WBS | Task | Type | Duration | Start | Finish | Predecessors | Complete | Resources |
| --- | --- | --- | --- | --- | --- | --- | --- | --- | --- |
| 85 | 3.11 | **Project Plan** |  | 13d | 2016-02-12 | 2016-03-01 | 32 | 93% |  |
| 86 | 3.11.1 | Plan Project Plan |  | 1d | 2016-02-12 | 2016-02-12 | 32 | 100% | Ross Tarrant [40%] |
| 87 | 3.11.2 | Create Config Management Plan |  | 1d | 2016-02-15 | 2016-02-15 | 86 | 100% | Ross Tarrant [40%] |
| 88 | 3.11.3 | Design Tests for Test Plan |  | 2d | 2016-02-16 | 2016-02-17 | 87 | 100% | Ross Tarrant [20%] |
| 89 | 3.11.4 | Update Gantt to reflect current progress |  | 1d | 2016-02-16 | 2016-02-16 | 34 | 100% | Ross Tarrant [20%] |
| 90 | 3.11.5 | Write up Test Plan |  | 2d | 2016-02-18 | 2016-02-19 | 88 | 100% | Ross Tarrant [20%] |
| 91 | 3.11.6 | Update Config Management Plan |  | 1d | 2016-02-22 | 2016-02-22 | 87, 90 | 100% | Ross Tarrant [40%] |
| 92 | 3.11.7 | Update Gantt to reflect current progress |  | 1d | 2016-02-18 | 2016-02-18 | 35 | 100% | Ross Tarrant [20%] |
| 93 | 3.11.8 | Update Gantt to Reflect Current Progress |  | 1d | 2016-02-29 | 2016-02-29 | 36, 38, 92 | 100% | Ross Tarrant [40%] |
| 94 | 3.11.9 | Revise Risk Assessment |  | 3d | 2016-02-23 | 2016-02-25 | 91 | 100% | Ross Tarrant [40%] |
| 95 | 3.11.10 | Update Gantt to Reflect Current Progress |  | 1d | 2016-03-01 | 2016-03-01 | 38, 92, 93 | 100% | Ross Tarrant [40%] |
| 96 | 3.11.11 | Review Project Plan with Group |  | 1d | 2016-02-26 | 2016-02-26 | 89, 92, 94 | 100% | Ross Tarrant [40%] |
| 97 | 3.11.12 | Project Plan Complete | milestone | 0d | 2016-03-02 | 2016-03-02 | 93, 95, 96 |  |  |
| 98 | 3.12 | **Develop Prototype Source Code** |  | 11d | 2016-02-16 | 2016-03-01 | 32 | 95% |  |
| 99 | 3.12.1 | Allocate Tasks to Group |  | 1d | 2016-02-16 | 2016-02-16 | 34 | 100% | Ross Tarrant [5%]; Connor Perrin [5%]; Will Peck [5%]; Phoebe Clarke [5%]; Ihtasham Chaudhry [5%]; Gavin So [5%]; Kalin Ivanov [5%] |
| 100 | 3.12.2 | Design Domain Model |  | 2d | 2016-02-17 | 2016-02-18 | 99 | 100% | Phoebe Clarke [15%] |
| 101 | 3.12.3 | Create Roles (Searcher/Landlord) |  | 1d | 2016-02-19 | 2016-02-19 | 34, 100 | 100% | Will Peck [15%] |
| 102 | 3.12.4 | Develop Account Creation |  | 2d | 2016-02-19 | 2016-02-22 | 34, 100 | 100% | Will Peck [15%] |
| 103 | 3.12.5 | Create Security Config Layer |  | 2d | 2016-02-17 | 2016-02-18 | 99 | 100% | Will Peck [15%] |
| 104 | 3.12.6 | Create Security Session Controller |  | 2d | 2016-02-19 | 2016-02-22 | 103 | 100% | Kalin Ivanov [10%] |
| 105 | 3.12.7 | Create Account Controller |  | 1d | 2016-02-17 | 2016-02-17 | 99 | 100% | Gavin So [10%] |
| 106 | 3.12.8 | Test Security Layer |  | 1d | 2016-02-23 | 2016-02-23 | 104 | 100% | Will Peck [15%] |
| 107 | 3.12.9 | Create JSP Files |  | 2d | 2016-02-24 | 2016-02-25 | 103, 104, 105, 106 | 100% | Will Peck [15%] |
| 108 | 3.12.10 | Develop Account Deletion |  | 1d | 2016-02-23 | 2016-02-23 | 102 | 100% | Will Peck [15%] |
| 109 | 3.12.11 | Develop Property Creation |  | 2d | 2016-02-22 | 2016-02-23 | 34, 63, 100 | 100% | Ross Tarrant [15%] |
| 110 | 3.12.12 | Develop "Express Interest" Feature |  | 2d | 2016-02-24 | 2016-02-25 | 109 | 100% | Ross Tarrant [15%] |
| 111 | 3.12.13 | Create User Login |  | 1d | 2016-02-18 | 2016-02-18 | 35 | 100% | Ihtasham Chaudhry [15%] |
| 112 | 3.12.14 | Create Index Page |  | 2d | 2016-02-18 | 2016-02-19 | 35 | 100% | Connor Perrin [15%] |
| 113 | 3.12.15 | Develop Search Feature |  | 3d | 2016-02-24 | 2016-02-26 | 35, 109 | 100% | Connor Perrin [15%] |
| 114 | 3.12.16 | Develop Mapping Feature |  | 3d | 2016-02-22 | 2016-02-24 | 36 | 100% | Ihtasham Chaudhry [15%] |
| 115 | 3.12.17 | Implement Buddy Up System |  | 2d | 2016-02-23 | 2016-02-24 | 36, 102 | 100% | Ihtasham Chaudhry [15%] |
| 116 | 3.12.18 | Develop User Ratings System |  | 2d | 2016-02-24 | 2016-02-25 | 36, 102, 109 | 100% | Phoebe Clarke [15%] |
| 117 | 3.12.19 | Setup Remote Database |  | 1d | 2016-02-22 | 2016-02-22 | 36 | 100% | Ihtasham Chaudhry [5%] |
| 118 | 3.12.20 | Develop Messaging Feature |  | 1d | 2016-02-25 | 2016-02-25 | 115 | 100% | Ihtasham Chaudhry [15%] |
| 119 | 3.12.21 | Develop Account Suspension Message |  | 1d | 2016-02-23 | 2016-02-23 | 102 | 100% | Gavin So [15%] |
| 120 | 3.12.22 | Develop Global Messaging Feature (Admins) |  | 1d | 2016-02-26 | 2016-02-26 | 118 | 100% | Will Peck [15%] |
| 121 | 3.12.23 | Source Code Complete | milestone | 0d | 2016-02-29 | 2016-02-29 | 100, 107, 108, 109, 110, 111, 112, 113, 114, 115, 116, 117, 118, 119, 120 |  |  |
| 122 | 3.12.24 | Conduct Functional Testing |  | 2d | 2016-02-29 | 2016-03-01 | 121 | 100% | Ross Tarrant [20%]; Connor Perrin [20%]; Will Peck [20%]; Phoebe Clarke [20%]; Ihtasham Chaudhry [20%]; Gavin So [20%]; Kalin Ivanov [20%] |
| 123 | 3.12.25 | Test UI |  | 2d | 2016-02-29 | 2016-03-01 | 121 | 100% | Ross Tarrant [20%]; Connor Perrin [20%]; Will Peck [20%]; Phoebe Clarke [20%]; Ihtasham Chaudhry [20%]; Gavin So [20%]; Kalin Ivanov [20%] |
| 124 | 3.12.26 | Testing Complete | milestone | 0d | 2016-03-02 | 2016-03-02 | 122, 123 |  |  |
| 125 | 3.13 | Worksheet 2 Deadline | milestone | 0d | 2016-03-04 | 2016-03-04 |  |  |  |
| 126 | 3.14 | Submit WS2 | milestone | 0d | 2016-03-03 | 2016-03-03 | 39, 47, 54, 66, 75, 121 |  | Ross Tarrant; Connor Perrin; Will Peck; Phoebe Clarke; Ihtasham Chaudhry; Gavin So; Kalin Ivanov |

| ID | WBS | Task | Type | Duration | Start | Finish | Predecessors | Complete | Resources |
| --- | --- | --- | --- | --- | --- | --- | --- | --- | --- |
| 127 | 4 | **Worksheet 3** |  | 41d | 2016-03-03 | 2016-04-28 |  | 78% |  |
| 128 | 4.1 | Worksheet 3 Released | milestone | 0d | 2016-03-03 | 2016-03-03 |  |  |  |
| 129 | 4.2 | **Meetings** |  | 31d | 2016-03-08 | 2016-04-19 |  |  |  |
| 130 | 4.2.1 | Meeting 07/03 (Initial WS3 Meeting) | milestone | 0d | 2016-03-08 | 2016-03-08 |  |  |  |
| 131 | 4.2.2 | Meeting 09/03 | milestone | 0d | 2016-03-09 | 2016-03-09 |  |  |  |
| 132 | 4.2.3 | Meeting 11/03 | milestone | 0d | 2016-03-11 | 2016-03-11 |  |  |  |
| 133 | 4.2.4 | Meeting 15/03 | milestone | 0d | 2016-03-15 | 2016-03-15 |  |  |  |
| 134 | 4.2.5 | Meeting 18/03 | milestone | 0d | 2016-03-18 | 2016-03-18 |  |  |  |
| 135 | 4.2.6 | Meeting 23/03 | milestone | 0d | 2016-03-23 | 2016-03-23 |  |  |  |
| 136 | 4.2.7 | Meeting 30/03 | milestone | 0d | 2016-03-30 | 2016-03-30 |  |  |  |
| 137 | 4.2.8 | Meeting 13/04 | milestone | 0d | 2016-04-13 | 2016-04-13 |  |  |  |
| 138 | 4.2.9 | Meeting 20/04 | milestone | 0d | 2016-04-20 | 2016-04-20 |  |  |  |
| 139 | 4.3 | **Sprint Backlog** |  | 14d | 2016-03-18 | 2016-04-06 | 130 | 93% |  |
| 140 | 4.3.1 | Review Previous Scenarios |  | 3d | 2016-03-18 | 2016-03-22 | 130FS+8d | 100% | Kalin Ivanov [30%] |
| 141 | 4.3.2 | Revise Previous Scenarios |  | 3d | 2016-03-23 | 2016-03-25 | 140 | 100% | Kalin Ivanov [30%] |
| 142 | 4.3.3 | List features not implemented |  | 2d | 2016-03-28 | 2016-03-29 | 141 | 100% | Kalin Ivanov [30%] |
| 143 | 4.3.4 | Create scenarios for new features to be added |  | 6d | 2016-03-30 | 2016-04-06 | 142 | 100% | Kalin Ivanov [30%] |
| 144 | 4.3.5 | Sprint Backlog Complete | milestone | 0d | 2016-04-07 | 2016-04-07 | 143 |  |  |
| 145 | 4.4 | **Design Documents** |  | 11d | 2016-03-14 | 2016-03-28 | 130 | 95% |  |
| 146 | 4.4.1 | Review Design Documents from previous worksheets |  | 3d | 2016-03-17 | 2016-03-21 | 130FS+7d | 100% |  |
| 147 | 4.4.2 | Revise Design Documents |  | 5d | 2016-03-22 | 2016-03-28 | 146 | 100% |  |
| 148 | 4.4.3 | Plan Summaries |  | 3d | 2016-03-14 | 2016-03-16 | 130FS+4d | 100% | Gavin So [30%]; Kalin Ivanov [30%] |
| 149 | 4.4.4 | Create Summary of Key Design Decisions |  | 6d | 2016-03-17 | 2016-03-24 | 148 | 100% | Gavin So [30%] |
| 150 | 4.4.5 | Create Summary of what was done to help with performance/security |  | 6d | 2016-03-17 | 2016-03-24 | 148 | 100% | Kalin Ivanov [30%] |
| 151 | 4.4.6 | Design Documents Complete | milestone | 0d | 2016-03-29 | 2016-03-29 | 147, 149, 150 |  |  |

| ID | WBS | Task | Type | Duration | Start | Finish | Predecessors | Complete | Resources |
| --- | --- | --- | --- | --- | --- | --- | --- | --- | --- |
| 152 | 4.5 | **Project Plan** |  | 36d | 2016-03-08 | 2016-04-26 | 130 | 95% |  |
| 153 | 4.5.1 | Update Gantt to reflect WS3 |  | 2d | 2016-03-08 | 2016-03-09 | 130 | 100% | Ross Tarrant [40%] |
| 154 | 4.5.2 | Review WS2's Config Management Plan |  | 2d | 2016-03-10 | 2016-03-11 | 153 | 100% | Ross Tarrant [20%] |
| 155 | 4.5.3 | Review WS2's Risk Assessment |  | 2d | 2016-03-10 | 2016-03-11 | 153 | 100% | Ross Tarrant [20%] |
| 156 | 4.5.4 | Revise Config Management Plan |  | 4d | 2016-03-14 | 2016-03-17 | 154 | 100% | Ross Tarrant [20%] |
| 157 | 4.5.5 | Revise Risk Assessment |  | 5d | 2016-03-14 | 2016-03-18 | 155 | 100% | Ross Tarrant [20%] |
| 158 | 4.5.6 | Update Gantt to reflect current progress |  | 2d | 2016-03-24 | 2016-03-25 | 153FS+10d | 100% | Ross Tarrant [40%] |
| 159 | 4.5.7 | Update Gantt to reflect current progress |  | 2d | 2016-04-01 | 2016-04-04 | 158FS+4d | 100% | Ross Tarrant [40%] |
| 160 | 4.5.8 | Update Gantt to reflect current progress |  | 1d | 2016-04-08 | 2016-04-08 | 159FS+3d | 100% | Ross Tarrant [40%] |
| 161 | 4.5.9 | Update Gantt to reflect current progress |  | 1d | 2016-04-14 | 2016-04-14 | 160FS+3d | 100% | Ross Tarrant [40%] |
| 162 | 4.5.10 | Update Gantt to reflect current progress |  | 1d | 2016-04-20 | 2016-04-20 | 161FS+3d | 100% | Ross Tarrant [40%] |
| 163 | 4.5.11 | Update Gantt to reflect current progress |  | 1d | 2016-04-26 | 2016-04-26 | 162FS+3d | 100% | Ross Tarrant [40%] |
| 164 | 4.5.12 | Project Plan Complete | milestone | 0d | 2016-04-27 | 2016-04-27 | 153, 156, 157, 158, 159, 160, 161, 162, 163 |  |  |
| 165 | 4.6 | **Minutes** |  | 32d | 2016-03-08 | 2016-04-20 | 130 | 90% |  |
| 166 | 4.6.1 | Minutes for 07/03 |  | 1d | 2016-03-08 | 2016-03-08 | 130 | 100% | Phoebe Clarke [20%] |
| 167 | 4.6.2 | Minutes for 09/03 |  | 1d | 2016-03-09 | 2016-03-09 | 131 | 100% | Phoebe Clarke [20%] |
| 168 | 4.6.3 | Minutes for 11/03 |  | 1d | 2016-03-11 | 2016-03-11 | 132 | 100% | Phoebe Clarke [20%] |
| 169 | 4.6.4 | Minutes for 15/03 |  | 1d | 2016-03-15 | 2016-03-15 | 133 | 100% | Phoebe Clarke [20%] |
| 170 | 4.6.5 | Minutes for 18/03 |  | 1d | 2016-03-18 | 2016-03-18 | 134 | 100% | Phoebe Clarke [20%] |
| 171 | 4.6.6 | Minutes for 23/03 |  | 1d | 2016-03-23 | 2016-03-23 | 135 | 100% | Phoebe Clarke [20%] |
| 172 | 4.6.7 | Minutes for 30/03 |  | 1d | 2016-03-30 | 2016-03-30 | 136 | 100% | Phoebe Clarke [20%] |
| 173 | 4.6.8 | Minutes for 13/04 |  | 1d | 2016-04-13 | 2016-04-13 | 137, 172 | 100% | Phoebe Clarke [20%] |
| 174 | 4.6.9 | Minutes for 20/04 |  | 1d | 2016-04-20 | 2016-04-20 | 138 | 100% | Phoebe Clarke [20%] |
| 175 | 4.6.10 | Minutes Completed | milestone | 0d | 2016-04-21 | 2016-04-21 | 166, 167, 168, 169, 170, 171, 172, 173, 174 |  |  |

| ID | WBS | Task | Type | Duration | Start | Finish | Predecessors | Complete | Resources |
| --- | --- | --- | --- | --- | --- | --- | --- | --- | --- |
| 176 | 4.7 | **Sprint 1 Retrospective** |  | 11d | 2016-03-08 | 2016-03-22 | 130 | 91% |  |
| 177 | 4.7.1 | Review Sprint 1 |  | 2d | 2016-03-08 | 2016-03-09 | 130 | 100% | Phoebe Clarke [20%] |
| 178 | 4.7.2 | Draft Retrospective |  | 4d | 2016-03-10 | 2016-03-15 | 177 | 100% | Phoebe Clarke [20%] |
| 179 | 4.7.3 | Revise Retrospective |  | 5d | 2016-03-16 | 2016-03-22 | 178 | 100% | Phoebe Clarke [20%] |
| 180 | 4.7.4 | Sprint 1 Retrospective Complete | milestone | 0d | 2016-03-23 | 2016-03-23 | 179 |  |  |
| 181 | 4.8 | **Sprint 2 Retrospective** |  | 11d | 2016-04-13 | 2016-04-27 | 137 | 91% |  |
| 182 | 4.8.1 | Review Sprint 2 |  | 2d | 2016-04-13 | 2016-04-14 | 130 | 100% | Phoebe Clarke [20%] |
| 183 | 4.8.2 | Draft Retrospective |  | 4d | 2016-04-15 | 2016-04-20 | 182 | 100% | Phoebe Clarke [20%] |
| 184 | 4.8.3 | Revise Retrospective |  | 5d | 2016-04-21 | 2016-04-27 | 183 | 100% | Phoebe Clarke [20%] |
| 185 | 4.8.4 | Sprint 2 Retrospective Complete | milestone | 0d | 2016-04-28 | 2016-04-28 | 184 |  |  |
| 186 | 4.9 | **User Manual and Installation Guide** |  | 24d | 2016-03-08 | 2016-04-08 | 130 | 93% |  |
| 187 | 4.9.1 | List all features of application |  | 5d | 2016-03-08 | 2016-03-14 | 1FS+6d | 100% |  |
| 188 | 4.9.2 | Create instructions on usage of each feature |  | 7d | 2016-03-15 | 2016-03-23 | 187 | 100% |  |
| 189 | 4.9.3 | Create error guide |  | 4d | 2016-03-24 | 2016-03-29 | 188 | 100% |  |
| 190 | 4.9.4 | Revise Instruction Manual |  | 4d | 2016-03-30 | 2016-04-04 | 189 | 100% |  |
| 191 | 4.9.5 | Create Installation Guide |  | 4d | 2016-04-05 | 2016-04-08 | 190 | 100% |  |
| 192 | 4.9.6 | User Manual and Installation Guide Complete | milestone | 0d | 2016-04-11 | 2016-04-11 | 191 |  |  |
| 193 | 4.10 | **Software Artefacts** |  | 36d | 2016-03-08 | 2016-04-26 | 130 | 88% |  |
| 194 | 4.10.1 | **System Source Code** |  | 36d | 2016-03-08 | 2016-04-26 | 130 | 88% |  |
| 195 | 4.10.1.1 | Allocate Tasks |  | 1d | 2016-03-08 | 2016-03-08 |  | 100% |  |
| 196 | 4.10.1.2 | Implement Buddy Up System |  | 14d | 2016-03-09 | 2016-03-28 | 195 | 100% | Will Peck [45%] |
| 197 | 4.10.1.3 | Redo Search Enging |  | 4d | 2016-03-17 | 2016-03-22 | 195FS+6d | 100% | Connor Perrin [50%] |
| 198 | 4.10.1.4 | Fix Issues with Adding Property |  | 3d | 2016-03-16 | 2016-03-18 |  | 100% | Ihtasham Chaudhry [25%] |
| 199 | 4.10.1.5 | Implement Property Deletion (Landlord) |  | 2d | 2016-03-21 | 2016-03-22 | 198 | 100% | Ihtasham Chaudhry [25%] |
| 200 | 4.10.1.6 | Implement Image Upload for Properties |  | 2d | 2016-03-22 | 2016-03-23 | 198FS+1d | 100% | Phoebe Clarke [25%] |
| 201 | 4.10.1.7 | Develop Express Interest Feature |  | 3d | 2016-03-09 | 2016-03-11 | 195 | 100% | Connor Perrin [25%] |
| 202 | 4.10.1.8 | Implement Express Interest Feature |  | 2d | 2016-03-14 | 2016-03-15 | 201 | 100% | Connor Perrin [25%] |
| 203 | 4.10.1.9 | Add a 'Back' button |  | 1d | 2016-03-14 | 2016-03-14 |  | 100% | Phoebe Clarke [15%] |
| 204 | 4.10.1.10 | Extend Gherkin Tests |  | 3d | 2016-03-09 | 2016-03-11 | 195 | 100% | Ihtasham Chaudhry [30%] |
| 205 | 4.10.1.11 | Finish Feedback Feature |  | 1d | 2016-03-09 | 2016-03-09 | 195 | 100% | Ross Tarrant [15%] |
| 206 | 4.10.1.12 | Develop Report Feature |  | 2d | 2016-03-29 | 2016-03-30 | 195FS+14d | 100% | Connor Perrin [35%] |
| 207 | 4.10.1.13 | Implement Report Feature |  | 2d | 2016-03-31 | 2016-04-01 | 206 | 100% | Connor Perrin; Will Peck [40%] |
| 208 | 4.10.1.14 | Redesign CSS (Bootstrap) |  | 3d | 2016-03-25 | 2016-03-29 | 195FS+12d | 100% | Ross Tarrant [30%] |

| ID | WBS | Task | Type | Duration | Start | Finish | Predecessors | Complete | Resources |
| --- | --- | --- | --- | --- | --- | --- | --- | --- | --- |
| 209 | 4.10.1.15 | **Add Additional Pages** |  | 8d | 2016-03-30 | 2016-04-08 |  | 100% |  |
| 210 | 4.10.1.15.1 | Create a 'Terms of Use' |  | 2d | 2016-03-30 | 2016-03-31 | 208 | 100% | Phoebe Clarke [10%] |
| 211 | 4.10.1.15.2 | Create a 'Help' page |  | 2d | 2016-04-01 | 2016-04-04 | 210 | 100% | Phoebe Clarke [10%] |
| 212 | 4.10.1.15.3 | Create a 'Privacy' page |  | 2d | 2016-04-05 | 2016-04-06 | 211 | 100% | Phoebe Clarke [10%] |
| 213 | 4.10.1.15.4 | Create a 'FAQ' page |  | 2d | 2016-04-07 | 2016-04-08 | 212 | 100% | Phoebe Clarke [10%] |
| 214 | 4.10.1.16 | Implement chat on profile pages |  | 4d | 2016-03-23 | 2016-03-28 | 195FS+10d | 100% |  |
| 215 | 4.10.1.17 | Add buddy list to profile pages |  | 3d | 2016-03-22 | 2016-03-24 | 195FS+9d | 100% | Will Peck [25%] |
| 216 | 4.10.1.18 | Extend Admin Capabilities |  | 4d | 2016-03-14 | 2016-03-17 | 195FS+3d | 100% | Ihtasham Chaudhry [30%] |
| 217 | 4.10.1.19 | Create a Password Recovery function |  | 4d | 2016-03-24 | 2016-03-29 | 195FS+11d | 100% | Ihtasham Chaudhry [30%] |
| 218 | 4.10.1.20 | Implement Turn by Turn Navigation (NOT IMPLEMENTED) |  | 10d | 2016-03-29 | 2016-04-11 | 195FS+14d |  |  |
| 219 | 4.10.1.21 | Implement Analytics |  | 7d | 2016-03-31 | 2016-04-08 | 195FS+16d | 100% |  |
| 220 | 4.10.1.22 | Restyle Homepage |  | 3d | 2016-04-04 | 2016-04-06 |  | 100% |  |
| 221 | 4.10.1.23 | Add 'Property Added' Notifcation |  | 2d | 2016-03-22 | 2016-03-23 |  | 100% | Connor Perrin [35%] |
| 222 | 4.10.1.24 | Manage Users to edit/suspend/delete users |  | 4d | 2016-03-31 | 2016-04-05 |  | 100% |  |
| 223 | 4.10.1.25 | Add 'Search by Interest' feature |  | 2d | 2016-04-04 | 2016-04-05 |  | 100% | Connor Perrin [25%] |
| 224 | 4.10.1.26 | Create User Listings |  | 2d | 2016-03-30 | 2016-03-31 |  | 100% | Will Peck [25%] |
| 225 | 4.10.1.27 | Create Property Listings |  | 2d | 2016-04-01 | 2016-04-04 | 224 | 100% | Ihtasham Chaudhry [25%] |
| 226 | 4.10.1.28 | Implement template onto login screen |  | 4d | 2016-04-11 | 2016-04-14 |  | 100% | Ross Tarrant [10%]; Will Peck [10%]; Ihtasham Chaudhry [10%] |
| 227 | 4.10.1.29 | System Source Code Complete | milestone | 0d | 2016-04-15 | 2016-04-15 | 196, 213, 218, 219, 220, 221, 222, 223, 225, 226 |  |  |
| 228 | 4.10.1.30 | **Testing** |  | 8d | 2016-04-15 | 2016-04-26 | 227 | 80% |  |
| 229 | 4.10.1.30.1 | Unit Testing |  | 3d | 2016-04-15 | 2016-04-19 |  | 100% | Ross Tarrant [30%]; Connor Perrin [30%]; Will Peck [30%]; Phoebe Clarke [30%]; Ihtasham Chaudhry [30%]; Gavin So [30%]; Kalin Ivanov [30%] |
| 230 | 4.10.1.30.2 | Functional Testing |  | 3d | 2016-04-20 | 2016-04-22 | 229 | 100% | Ross Tarrant [30%]; Connor Perrin [30%]; Will Peck [30%]; Phoebe Clarke [30%]; Ihtasham Chaudhry [30%]; Gavin So [30%]; Kalin Ivanov [30%] |
| 231 | 4.10.1.30.3 | UI Testing |  | 2d | 2016-04-25 | 2016-04-26 | 230 | 100% | Ross Tarrant [30%]; Connor Perrin [30%]; Will Peck [30%]; Phoebe Clarke [30%]; Ihtasham Chaudhry [30%]; Gavin So [30%]; Kalin Ivanov [30%] |
| 232 | 4.10.1.30.4 | Testing Complete | milestone | 0d | 2016-04-27 | 2016-04-27 | 231 |  |  |

| ID | WBS | Task | Type | Duration | Start | Finish | Predecessors | Complete | Resources |
| --- | --- | --- | --- | --- | --- | --- | --- | --- | --- |
| 233 | 4.11 | **Individual Essay** |  | 25d | 2016-03-23 | 2016-04-26 | 130 | 96% |  |
| 234 | 4.11.1 | Write Communication Section |  | 3d | 2016-03-23 | 2016-03-25 | 135 | 100% |  |
| 235 | 4.11.2 | Write Teamwork Section |  | 3d | 2016-03-28 | 2016-03-30 | 234 | 100% |  |
| 236 | 4.11.3 | Write Problem Solving Section |  | 3d | 2016-03-31 | 2016-04-04 | 235 | 100% |  |
| 237 | 4.11.4 | Write Project Management Section |  | 3d | 2016-04-05 | 2016-04-07 | 236 | 100% |  |
| 238 | 4.11.5 | Write Creativity Section |  | 3d | 2016-04-08 | 2016-04-12 | 237 | 100% |  |
| 239 | 4.11.6 | Write Adaptability Section |  | 3d | 2016-04-13 | 2016-04-15 | 238 | 100% |  |
| 240 | 4.11.7 | Compile Sections Together |  | 1d | 2016-04-18 | 2016-04-18 | 239 | 100% |  |
| 241 | 4.11.8 | Review Essay |  | 2d | 2016-04-19 | 2016-04-20 | 240 | 100% |  |
| 242 | 4.11.9 | Revise Essay |  | 3d | 2016-04-21 | 2016-04-25 | 241 | 100% |  |
| 243 | 4.11.10 | Individual Essay Complete | milestone | 0d | 2016-04-26 | 2016-04-26 | 242 |  |  |
| 244 | 4.11.11 | Submit Essay |  | 1d | 2016-04-26 | 2016-04-26 | 243 | 100% |  |
| 245 | 4.12 | Submit WS3 |  | 1d | 2016-04-28 | 2016-04-28 | 151, 164, 175, 180, 185, 191, 227, 228, 232 |  | Ross Tarrant [15%]; Will Peck [15%]; Phoebe Clarke [15%]; Ihtasham Chaudhry [15%]; Gavin So [15%]; Kalin Ivanov [15%] |
| 246 | 4.13 | Worksheet 3 Deadline | milestone | 0d | 2016-04-28 | 2016-04-28 |  |  |  |
